# 01-毛记线稿-范围规划

Schedule from MS Project, 2020-03-04 to 2020-07-31, costs in ¥.
Microsoft

## Calendars

- 标准: Mon-Fri 08:00-12:00, 13:00-17:00; Sat-Sun off.

## Resources

| Resource | Rate |
| --- | --- |
| 司涵 | 50 |
| 康奥钒 | 40 |
| 李晓萌 | 55 |
| 褚雅琦 | 50 |
| 储备 |  |
| 间接 |  |

## Schedule

| ID | WBS | Task | Type | Duration | Start | Finish | Predecessors | Total slack | Free slack | Constraint | Resources | Work | Cost |
| --- | --- | --- | --- | --- | --- | --- | --- | --- | --- | --- | --- | --- | --- |
| 1 | 1 | **论证** |  | 1d | 2020-03-04 | 2020-03-05 |  |  |  |  |  | 20h | 980 |
| 2 | 1.1 | 问题描述 | manual | 0.5d | 2020-03-04 | 2020-03-04 |  |  |  |  | 司涵 | 4h | 200 |
| 3 | 1.2 | 产品愿景与商业机会 | manual | 0.5d | 2020-03-04 | 2020-03-04 |  |  |  |  | 康奥钒 | 4h | 160 |
| 4 | 1.3 | 用户分析 | manual | 0.5d | 2020-03-04 | 2020-03-04 |  |  |  |  | 李晓萌 | 4h | 220 |
| 5 | 1.4 | 界面原型 | manual | 1d | 2020-03-04 | 2020-03-05 |  |  |  |  | 褚雅琦 | 8h | 400 |
| 6 | 2 | **启动** |  | 2d | 2020-03-26 | 2020-03-27 |  |  |  |  |  | 28h | 1,360 |
| 7 | 2.1 | 干系人登记册 | manual | 0.5d | 2020-03-26 | 2020-03-26 |  |  |  |  | 康奥钒 | 4h | 160 |
| 8 | 2.2 | 里程碑计划 | manual | 0.5d | 2020-03-26 | 2020-03-26 |  |  |  |  | 李晓萌 | 4h | 220 |
| 9 | 2.3 | 制定项目章程 | manual | 0.5d | 2020-03-26 | 2020-03-26 |  |  |  |  | 褚雅琦 | 4h | 200 |
| 10 | 2.4 | 项目启动大会 | manual | 0.5d | 2020-03-27 | 2020-03-27 |  |  |  |  | 康奥钒; 褚雅琦; 司涵; 李晓萌 | 16h | 780 |
| 11 | 3 | 明确用户需求 | manual | 1d | 2020-03-26 | 2020-03-27 |  |  |  |  | 司涵 | 8h | 400 |
| 12 | 4 | **规划** |  | 24d | 2020-03-30 | 2020-04-30 | 11 |  |  |  |  | 400h | 19,800 |
| 13 | 4.1 | **范围规划** |  | 3d | 2020-03-30 | 2020-04-01 |  |  |  |  |  | 112h | 5,520 |
| 14 | 4.1.1 | 项目范围管理计划书 |  | 0.5d | 2020-03-30 | 2020-03-30 |  | 2.38d | 1.88d |  | 司涵 | 4h | 200 |
| 15 | 4.1.2 | 制定需求说明书 |  | 0.5d | 2020-03-30 | 2020-03-30 |  | 2.38d | 1.88d |  | 司涵 | 4h | 200 |
| 16 | 4.1.3 | 完善界面设计 |  | 2d | 2020-03-30 | 2020-04-01 |  | 0.88d | 0.38d |  | 褚雅琦 | 16h | 800 |
| 17 | 4.1.4 | 详细设计说明书 |  | 0.5d | 2020-03-30 | 2020-03-30 |  | 2.38d | 1.88d |  | 李晓萌 | 4h | 220 |
| 18 | 4.1.5 | 项目范围说明书 |  | 0.5d | 2020-03-30 | 2020-03-30 |  | 2.38d | 1.88d |  | 司涵 | 4h | 200 |
| 19 | 4.1.6 | 创建WBS |  | 2d | 2020-03-30 | 2020-04-01 |  | 0.88d | 0.38d |  | 褚雅琦; 康奥钒; 李晓萌; 司涵 | 64h | 3,120 |
| 20 | 4.1.7 | 形成范围基准 |  | 0.5d | 2020-04-01 | 2020-04-01 | 14, 15, 16, 17, 18, 19 | 87d |  | finish no earlier than 2020-04-01 | 褚雅琦; 康奥钒; 李晓萌; 司涵 | 16h | 780 |
| 21 | 4.2 | **规划时间** |  | 3d | 2020-04-01 | 2020-04-03 | 13 |  |  |  | 褚雅琦; 康奥钒; 李晓萌; 司涵 | 96h | 4,680 |
| 22 | 4.2.1 | 排列工作包顺序 |  | 1d | 2020-04-01 | 2020-04-02 |  | 1.88d |  |  |  |  |  |
| 23 | 4.2.2 | 估算资源 |  | 1d | 2020-04-01 | 2020-04-02 |  | 1.88d |  |  |  |  |  |
| 24 | 4.2.3 | 估算持续时间 |  | 1d | 2020-04-01 | 2020-04-02 |  | 1.88d |  |  |  |  |  |
| 25 | 4.2.4 | 制定进度计划 |  | 1d | 2020-04-01 | 2020-04-02 |  | 1.88d |  |  |  |  |  |

| ID | WBS | Task | Type | Duration | Start | Finish | Predecessors | Total slack | Constraint | Resources | Work | Cost |
| --- | --- | --- | --- | --- | --- | --- | --- | --- | --- | --- | --- | --- |
| 26 | 4.3 | **规划成本** |  | 3d | 2020-04-06 | 2020-04-09 | 21 |  |  | 司涵; 李晓萌 | 48h | 2,520 |
| 27 | 4.3.1 | 项目成本估算 |  | 1d? | 2020-04-06 | 2020-04-07 |  | 2d |  |  |  |  |
| 28 | 4.3.2 | 项目预算 |  | 1d? | 2020-04-06 | 2020-04-07 |  | 2d |  |  |  |  |
| 29 | 4.4 | **规划质量** |  | 3d | 2020-04-09 | 2020-04-14 | 26 |  |  | 康奥钒 | 24h | 960 |
| 30 | 4.4.1 | 制定测试计划 |  | 1d? | 2020-04-09 | 2020-04-10 |  | 2d |  |  |  |  |
| 31 | 4.4.2 | 指定测试用例 |  | 1d? | 2020-04-09 | 2020-04-10 |  | 2d |  |  |  |  |
| 32 | 4.5 | **规划人力资源** |  | 3d | 2020-04-14 | 2020-04-17 | 29 |  |  | 司涵; 李晓萌 | 48h | 2,520 |
| 33 | 4.5.1 | 制定人力资源计划 |  | 1d? | 2020-04-14 | 2020-04-15 |  | 2d |  |  |  |  |
| 34 | 4.5.2 | 制定人员分配管理计划 |  | 1d? | 2020-04-14 | 2020-04-15 |  | 2d |  |  |  |  |
| 35 | 4.6 | **规划沟通** |  | 3d | 2020-04-20 | 2020-04-23 | 32 |  |  | 司涵 | 24h | 1,200 |
| 36 | 4.6.1 | 制定沟通管理计划 |  | 1d? | 2020-04-20 | 2020-04-21 |  | 2d |  |  |  |  |
| 37 | 4.7 | **规划风险** |  | 3d | 2020-04-24 | 2020-04-29 | 35 |  |  | 褚雅琦; 司涵 | 48h | 2,400 |
| 38 | 4.7.1 | 识别风险 |  | 1d? | 2020-04-24 | 2020-04-27 |  | 2d |  |  |  |  |
| 39 | 4.7.2 | 风险分析 |  | 1d? | 2020-04-24 | 2020-04-27 |  | 2d |  |  |  |  |
| 40 | 4.7.3 | 制定风险登记册 |  | 1d? | 2020-04-24 | 2020-04-27 |  | 2d |  |  |  |  |
| 41 | 5 | 产品原型 | milestone, manual | 2d | 2020-04-30 | 2020-05-01 | 11 |  |  | 褚雅琦 | 16h | 800 |
| 42 | 6 | **执行与监控** |  | 44d | 2020-05-01 | 2020-07-01 | 41 |  |  |  | 1008h | 47,880 |
| 43 | 6.1 | 组件项目团队 | manual | 1d | 2020-05-01 | 2020-05-01 |  |  |  |  |  |  |
| 44 | 6.2 | **项目执行** |  | 43d | 2020-05-01 | 2020-06-30 | 43 |  |  |  | 1008h | 47,880 |
| 45 | 6.2.1 | **注册模块** |  | 2d | 2020-05-04 | 2020-05-05 |  |  |  | 褚雅琦 | 16h | 800 |
| 46 | 6.2.1.1 | 用户名验证 |  | 1d? | 2020-05-04 | 2020-05-05 |  | 0.88d |  |  |  |  |
| 47 | 6.2.1.2 | 手机号验证 |  | 1d? | 2020-05-04 | 2020-05-05 |  | 0.88d |  |  |  |  |
| 48 | 6.2.1.3 | 短息验证码验证 |  | 1d? | 2020-05-04 | 2020-05-05 |  | 0.88d |  |  |  |  |
| 49 | 6.2.1.4 | **完成注册** |  | 1d | 2020-05-05 | 2020-05-05 |  |  |  |  |  |  |
| 50 | 6.2.1.4.1 | 密码设置 |  | 1d? | 2020-05-05 | 2020-05-05 |  | 63d | finish no earlier than 2020-05-05 |  |  |  |
| 51 | 6.2.1.4.2 | 跳转登陆 |  | 1d? | 2020-05-05 | 2020-05-05 |  | 63d | finish no earlier than 2020-05-05 |  |  |  |

| ID | WBS | Task | Type | Duration | Start | Finish | Predecessors | Total slack | Constraint | Resources | Work | Cost |
| --- | --- | --- | --- | --- | --- | --- | --- | --- | --- | --- | --- | --- |
| 52 | 6.2.2 | **登陆模块** |  | 2d | 2020-05-06 | 2020-05-08 | 45 |  |  | 褚雅琦 | 16h | 800 |
| 53 | 6.2.2.1 | 用户名或手机号验证 |  | 1d? | 2020-05-06 | 2020-05-07 |  | 1d |  |  |  |  |
| 54 | 6.2.2.2 | 密码验证 |  | 1d? | 2020-05-06 | 2020-05-07 |  | 1d |  |  |  |  |
| 55 | 6.2.2.3 | **登陆方式** |  | 1d | 2020-05-07 | 2020-05-08 |  |  |  |  |  |  |
| 56 | 6.2.2.3.1 | 手机号-验证码 | manual | 1d? | 2020-05-07 | 2020-05-08 |  |  |  |  |  |  |
| 57 | 6.2.2.3.2 | **其他** |  | 1d | 2020-04-15 | 2020-04-16 |  |  |  |  |  |  |
| 58 | 6.2.2.3.2.1 | QQ | manual | 1d? | 2020-04-15 | 2020-04-16 |  |  |  |  |  |  |
| 59 | 6.2.2.3.2.2 | 微信 | manual | 1d? | 2020-04-15 | 2020-04-16 |  |  |  |  |  |  |
| 60 | 6.2.2.4 | 完成登陆 |  | 1d? | 2020-05-06 | 2020-05-07 |  | 1d |  |  |  |  |
| 61 | 6.2.3 | **用户模块** |  | 2d | 2020-05-04 | 2020-05-05 |  |  |  | 司涵 | 16h | 800 |
| 62 | 6.2.3.1 | **用户信息** |  | 1d? | 2020-05-04 | 2020-05-05 |  | 0.88d |  |  |  |  |
| 63 | 6.2.3.1.1 | 头像 |  | 1d? | 2020-05-04 | 2020-05-05 |  | 0.88d |  |  |  |  |
| 64 | 6.2.3.1.2 | 用户名 |  | 1d? | 2020-05-04 | 2020-05-05 |  | 0.88d |  |  |  |  |
| 65 | 6.2.3.1.3 | 个性签名 |  | 1d? | 2020-05-04 | 2020-05-05 |  | 0.88d |  |  |  |  |
| 66 | 6.2.3.1.4 | **我的帖子** |  | 1d? | 2020-05-04 | 2020-05-05 |  | 0.88d |  |  |  |  |
| 67 | 6.2.3.1.4.1 | 跳转帖子发布 |  | 1d? | 2020-05-04 | 2020-05-05 |  | 0.88d |  |  |  |  |
| 68 | 6.2.3.1.5 | **我的素材** |  | 1d? | 2020-05-04 | 2020-05-05 |  | 0.88d |  |  |  |  |
| 69 | 6.2.3.1.5.1 | 跳转素材发布 |  | 1d? | 2020-05-04 | 2020-05-05 |  | 0.88d |  |  |  |  |
| 70 | 6.2.3.1.6 | 我的收藏 |  | 1d? | 2020-05-04 | 2020-05-05 |  | 0.88d |  |  |  |  |
| 71 | 6.2.3.2 | **设置** |  | 1d | 2020-05-05 | 2020-05-05 |  |  |  |  |  |  |
| 72 | 6.2.3.2.1 | 头像 |  | 1d? | 2020-05-05 | 2020-05-05 |  | 63d | finish no earlier than 2020-05-05 |  |  |  |
| 73 | 6.2.3.2.2 | 用户名 |  | 1d? | 2020-05-05 | 2020-05-05 |  | 63d | finish no earlier than 2020-05-05 |  |  |  |
| 74 | 6.2.3.2.3 | 个性签名 |  | 1d? | 2020-05-05 | 2020-05-05 |  | 63d | finish no earlier than 2020-05-05 |  |  |  |
| 75 | 6.2.3.2.4 | 问题反馈 |  | 1d | 2020-05-05 | 2020-05-05 |  | 63d | finish no earlier than 2020-05-05 |  |  |  |
| 76 | 6.2.3.2.5 | 退出登陆 |  | 1d? | 2020-05-05 | 2020-05-05 |  | 63d | finish no earlier than 2020-05-05 |  |  |  |

| ID | WBS | Task | Type | Duration | Start | Finish | Predecessors | Total slack | Constraint | Resources | Work | Cost |
| --- | --- | --- | --- | --- | --- | --- | --- | --- | --- | --- | --- | --- |
| 77 | 6.2.4 | **社区模块** |  | 2d | 2020-05-06 | 2020-05-08 |  |  |  | 司涵 | 16h | 800 |
| 78 | 6.2.4.1 | 轮播图展示 |  | 1d? | 2020-05-06 | 2020-05-07 |  | 1d |  |  |  |  |
| 79 | 6.2.4.2 | 推荐列表 |  | 1d? | 2020-05-06 | 2020-05-07 |  | 1d |  |  |  |  |
| 80 | 6.2.4.3 | 关注列表 |  | 1d? | 2020-05-06 | 2020-05-07 |  | 1d |  |  |  |  |
| 81 | 6.2.5 | 中期评审 | milestone, manual | 1d | 2020-05-11 | 2020-05-11 | 45, 52, 61, 77 |  |  | 褚雅琦; 康奥钒; 李晓萌; 司涵 | 32h | 1,560 |
| 82 | 6.2.6 | **消息模块** |  | 3d | 2020-05-12 | 2020-05-15 |  |  |  | 褚雅琦 | 24h | 1,200 |
| 83 | 6.2.6.1 | **搜索关注或消息** |  | 1d? | 2020-05-12 | 2020-05-13 |  | 0d |  |  |  |  |
| 84 | 6.2.6.1.1 | 按用户名 | manual | 1d? | 2020-05-12 | 2020-05-13 |  |  |  |  |  |  |
| 85 | 6.2.6.1.2 | 按手机号 | manual | 1d? | 2020-05-12 | 2020-05-13 |  |  |  |  |  |  |
| 86 | 6.2.6.2 | 关注列表 |  | 1d? | 2020-04-21 | 2020-04-22 |  | 72.88d | start no earlier than 2020-04-21 |  |  |  |
| 87 | 6.2.6.3 | 消息列表 |  | 1d? | 2020-04-21 | 2020-04-22 |  | 72.88d | start no earlier than 2020-04-21 |  |  |  |
| 88 | 6.2.7 | **素材模块** |  | 3d | 2020-05-12 | 2020-05-15 |  |  |  | 司涵 | 24h | 1,200 |
| 89 | 6.2.7.1 | **素材搜索** |  | 1d? | 2020-05-12 | 2020-05-13 |  | 2d |  |  |  |  |
| 90 | 6.2.7.1.1 | 按分类 |  | 1d? | 2020-05-12 | 2020-05-13 |  | 2d |  |  |  |  |
| 91 | 6.2.7.1.2 | 按标签 |  | 1d? | 2020-05-12 | 2020-05-13 |  | 2d |  |  |  |  |
| 92 | 6.2.7.1.3 | 按描述 |  | 1d? | 2020-05-12 | 2020-05-13 |  | 2d |  |  |  |  |
| 93 | 6.2.7.2 | **素材信息** |  | 1d? | 2020-04-21 | 2020-04-22 |  |  |  |  |  |  |
| 94 | 6.2.7.2.1 | 热门列表 |  | 1d? | 2020-04-21 | 2020-04-22 |  | 0d |  |  |  |  |
| 95 | 6.2.7.2.2 | 分类列表 |  | 1d? | 2020-04-21 | 2020-04-22 |  | 0d |  |  |  |  |
| 96 | 6.2.8 | web测试 | milestone, manual | 10d | 2020-05-01 | 2020-05-15 |  |  |  | 康奥钒 | 80h | 3,200 |
| 97 | 6.2.9 | **后端接口** |  | 8d | 2020-05-18 | 2020-05-27 |  |  |  |  | 96h | 4,800 |
| 98 | 6.2.9.1 | 注册模块接口 | manual | 2d | 2020-05-18 | 2020-05-20 |  |  |  | 褚雅琦 | 16h | 800 |
| 99 | 6.2.9.2 | 登陆模块接口 | manual | 2d | 2020-05-20 | 2020-05-22 |  |  |  | 褚雅琦 | 16h | 800 |
| 100 | 6.2.9.3 | 用户模块接口 | manual | 2d | 2020-05-18 | 2020-05-20 |  |  |  | 司涵 | 16h | 800 |
| 101 | 6.2.9.4 | 社区模块接口 | manual | 2d | 2020-05-20 | 2020-05-22 |  |  |  | 司涵 | 16h | 800 |
| 102 | 6.2.9.5 | 消息模块接口 | manual | 2d | 2020-05-25 | 2020-05-27 |  |  |  | 褚雅琦 | 16h | 800 |
| 103 | 6.2.9.6 | 素材模块接口 | manual | 2d | 2020-05-25 | 2020-05-27 |  |  |  | 司涵 | 16h | 800 |
| 104 | 6.2.10 | 接口测试 | manual | 3d | 2020-05-28 | 2020-06-01 | 97 |  |  | 康奥钒 | 24h | 960 |
| 105 | 6.2.11 | 接口对接 | manual | 4d | 2020-06-02 | 2020-06-05 | 45, 52, 61, 77, 82, 88, 97, 104 |  |  | 褚雅琦; 司涵 | 64h | 3,200 |

| ID | WBS | Task | Type | Duration | Start | Finish | Predecessors | Total slack | Constraint | Resources | Work | Cost |
| --- | --- | --- | --- | --- | --- | --- | --- | --- | --- | --- | --- | --- |
| 106 | 6.2.12 | **功能模块** |  | 5d | 2020-06-08 | 2020-06-12 |  |  |  |  | 64h | 3,200 |
| 107 | 6.2.12.1 | **发布帖子** |  | 2d | 2020-06-08 | 2020-06-10 |  |  |  | 司涵 | 16h | 800 |
| 108 | 6.2.12.1.1 | 文本 |  | 2d | 2020-06-08 | 2020-06-10 |  | 0d |  |  |  |  |
| 109 | 6.2.12.1.2 | 图片 |  | 2d | 2020-06-08 | 2020-06-10 |  | 0d |  |  |  |  |
| 110 | 6.2.12.1.3 | 发布 |  | 2d | 2020-06-08 | 2020-06-10 |  | 0d |  |  |  |  |
| 111 | 6.2.12.2 | **上传素材** |  | 2d | 2020-06-10 | 2020-06-12 |  |  |  | 司涵 | 16h | 800 |
| 112 | 6.2.12.2.1 | 描述 |  | 2d | 2020-06-10 | 2020-06-12 |  | 0d |  |  |  |  |
| 113 | 6.2.12.2.2 | 标签 |  | 2d | 2020-06-10 | 2020-06-12 |  | 0d |  |  |  |  |
| 114 | 6.2.12.2.3 | 图片 |  | 2d | 2020-06-10 | 2020-06-12 |  | 0d |  |  |  |  |
| 115 | 6.2.12.2.4 | 上传 |  | 2d | 2020-06-10 | 2020-06-12 |  | 0d |  |  |  |  |
| 116 | 6.2.12.3 | **提取线稿** |  | 4d | 2020-06-09 | 2020-06-12 |  |  |  | 褚雅琦 | 32h | 1,600 |
| 117 | 6.2.12.3.1 | 上传提取 |  | 1.88d? | 2020-06-09 | 2020-06-10 |  | 37d | start no earlier than 2020-06-09 |  |  |  |
| 118 | 6.2.12.3.2 | 继续调整 |  | 1.88d? | 2020-06-11 | 2020-06-12 |  | 35d | start no earlier than 2020-06-11 |  |  |  |
| 119 | 6.2.13 | **核心功能** |  | 33d | 2020-05-04 | 2020-06-17 |  |  |  |  | 208h | 11,440 |
| 120 | 6.2.13.1 | 验证码功能 |  | 3d | 2020-05-04 | 2020-05-07 |  | 29.88d |  | 李晓萌 | 24h | 1,320 |
| 121 | 6.2.13.2 | 其他登陆方式 |  | 3d | 2020-05-08 | 2020-05-13 |  | 57.88d | start no earlier than 2020-05-08 | 李晓萌 | 24h | 1,320 |
| 122 | 6.2.13.3 | 上传图片功能 |  | 2d | 2020-05-14 | 2020-05-18 |  | 54.88d | start no earlier than 2020-05-14 | 李晓萌 | 16h | 880 |
| 123 | 6.2.13.4 | 提取线稿功能 |  | 8d | 2020-05-19 | 2020-05-29 |  | 45.88d | start no earlier than 2020-05-19 | 李晓萌 | 64h | 3,520 |
| 124 | 6.2.13.5 | 线稿调整功能 |  | 5d | 2020-06-01 | 2020-06-08 |  | 39.88d | start no earlier than 2020-06-01 | 李晓萌 | 40h | 2,200 |
| 125 | 6.2.13.6 | 保存线稿功能 |  | 2d | 2020-06-09 | 2020-06-11 |  | 36.88d | start no earlier than 2020-06-09 | 李晓萌 | 16h | 880 |
| 126 | 6.2.13.7 | 分享链接功能 |  | 3d | 2020-06-12 | 2020-06-17 |  | 32.88d | start no earlier than 2020-06-12 | 李晓萌 | 24h | 1,320 |
| 127 | 6.2.14 | 性能测试 | milestone, manual | 31d | 2020-05-08 | 2020-06-19 |  |  |  | 康奥钒 | 248h | 9,920 |
| 128 | 6.2.15 | 对接功能模块接口 | manual | 5d | 2020-06-22 | 2020-06-29 | 106, 119, 127 |  |  | 褚雅琦; 司涵 | 80h | 4,000 |
| 129 | 7 | **项目监控** |  | 66d | 2020-05-01 | 2020-07-31 |  |  |  |  |  |  |
| 130 | 7.1 | 各项指标监控 | manual | 1d? | 2020-05-01 | 2020-05-04 |  |  |  |  |  |  |
| 131 | 7.2 | 监控评审 | manual | 1d? | 2020-05-01 | 2020-05-04 |  |  |  |  |  |  |
| 132 | 7.3 | 变更评审 | manual | 1d? | 2020-05-01 | 2020-05-04 |  |  |  |  |  |  |
| 133 | 7.4 | 例会 | manual | 1d? | 2020-05-01 | 2020-05-04 |  |  |  |  |  |  |

| ID | WBS | Task | Type | Duration | Start | Finish | Predecessors | Total slack | Constraint | Resources | Work | Cost |
| --- | --- | --- | --- | --- | --- | --- | --- | --- | --- | --- | --- | --- |
| 134 | 7.5 | **管理干系人** |  | 1d? | 2020-05-01 | 2020-05-04 |  |  |  |  |  |  |
| 135 | 7.5.1 | 发布项目信息 | manual | 1d? | 2020-05-01 | 2020-05-04 |  |  |  |  |  |  |
| 136 | 7.5.2 | 报告监控指标 | manual | 1d? | 2020-05-01 | 2020-05-04 |  |  |  |  |  |  |
| 137 | 7.5.3 | 干系人沟通 | manual | 1d? | 2020-05-01 | 2020-05-04 |  |  |  |  |  |  |
| 138 | 7.6 | **团队建设** |  | 1d? | 2020-05-01 | 2020-05-04 |  |  |  |  |  |  |
| 139 | 7.6.1 | 培训 | manual | 12d | 2020-05-01 | 2020-05-19 |  |  |  |  |  |  |
| 140 | 7.6.2 | 娱乐活动 | manual | 6d | 2020-05-01 | 2020-05-11 |  |  |  |  |  |  |
| 141 | 7.6.3 | 沟通 | manual | 6d | 2020-05-01 | 2020-05-11 |  |  |  |  |  |  |
| 142 | 8 | 用户测试 | milestone, manual | 11d | 2020-07-02 | 2020-07-16 | 42 |  |  |  |  |  |
| 143 | 9 | **收尾** |  | 10d | 2020-07-17 | 2020-07-30 | 142 |  |  |  | 256h | 12,480 |
| 144 | 9.1 | 项目优化 |  | 5d | 2020-07-20 | 2020-07-24 |  | 5d | finish no earlier than 2020-07-24 | 褚雅琦; 康奥钒; 李晓萌; 司涵 | 160h | 7,800 |
| 145 | 9.2 | 项目内部收尾 |  | 3d | 2020-07-27 | 2020-07-30 |  | 1.88d | start no earlier than 2020-07-27 | 褚雅琦; 康奥钒; 李晓萌; 司涵 | 96h | 4,680 |
| 146 | 10 | 验收评审会 | milestone, manual | 1d | 2020-07-31 | 2020-07-31 | 143 |  |  | 褚雅琦; 康奥钒; 李晓萌; 司涵 | 32h | 1,560 |
